# WMS kho trà Tân Cương

Schedule from ProjectLibre, 2027-06-03 to 2028-01-17.

## Calendars

- BTL 5 ngày x 8 giờ: Mon-Fri 08:00-12:00, 13:00-17:00; Sat-Sun off. Exceptions (off unless hours are given): 2027-09-02 to 2027-09-03.
- PM – Người quản lý dự án: Mon-Fri 08:00-12:00, 13:00-17:00; Sat-Sun off. Exceptions (off unless hours are given): 2027-09-02 to 2027-09-03.
- TL – Solution Architect / Tech Lead: Mon-Fri 08:00-12:00, 13:00-17:00; Sat-Sun off. Exceptions (off unless hours are given): 2027-09-02 to 2027-09-03.
- QA – QA/QC Engineer – kiểm thử: Mon-Fri 08:00-12:00, 13:00-17:00; Sat-Sun off. Exceptions (off unless hours are given): 2027-06-03 to 2027-08-02, 2027-09-02 to 2027-09-03.

## Resources

| Resource |
| --- |
| Unassigned |
| PM – Người quản lý dự án |
| TL – Solution Architect / Tech Lead |
| HW – Kỹ sư tích hợp RS232 |
| BA – Business Analyst – phân tích nghiệp vụ |
| BE – Backend Developer |
| FE – Frontend Developer |
| QA – QA/QC Engineer – kiểm thử |
| OS – Onsite Engineer – triển khai |

## Schedule

| ID | WBS | Task | Type | Duration | Start | Finish | Predecessors | Constraint | Calendar | Resources |
| --- | --- | --- | --- | --- | --- | --- | --- | --- | --- | --- |
| 1 | 1.1.1.1,1.1.1.2,1.1.1.3 | A01 Lập PMP, kế hoạch phạm vi/WBS và lịch/ngân sách đề xuất |  | 5d | 2027-06-03 | 2027-06-09 |  |  |  | PM – Người quản lý dự án [60%]; TL – Solution Architect / Tech Lead [10%] |
| 2 | 1.2.1.1,1.2.1.2 | A02 Khảo sát luồng kho tổng và danh mục/giao thức tài sản ba kho |  | 5d | 2027-06-03 | 2027-06-09 |  |  |  | BA – Business Analyst – phân tích nghiệp vụ [70%]; TL – Solution Architect / Tech Lead [20%]; PM – Người quản lý dự án [10%] |
| 3 | 1.2.1.3 | A03 Khảo sát Excel, BOM và dữ liệu mở kho |  | 3d | 2027-06-10 | 2027-06-14 | 2 |  |  | BA – Business Analyst – phân tích nghiệp vụ [70%]; TL – Solution Architect / Tech Lead [10%] |
| 4 | 1.2.2.2 | A04 Chốt giao thức, dải cân, tem và yêu cầu phi chức năng |  | 3d | 2027-06-10 | 2027-06-14 | 2 |  |  | TL – Solution Architect / Tech Lead [70%]; BA – Business Analyst – phân tích nghiệp vụ [20%] |
| 5 | 1.2.2.1 | A05 Lập SRS/use case và ma trận yêu cầu cho sáu nhóm người dùng |  | 5d | 2027-06-15 | 2027-06-21 | 3, 4 |  |  | BA – Business Analyst – phân tích nghiệp vụ [70%]; TL – Solution Architect / Tech Lead [10%] |
| 6 | 1.2.3.1 | A06 Thiết kế kiến trúc và kế hoạch môi trường dev/test |  | 4d | 2027-06-15 | 2027-06-18 | 4 |  |  | TL – Solution Architect / Tech Lead [70%]; BA – Business Analyst – phân tích nghiệp vụ [10%] |
| 7 | 1.2.3.2 | A07 Thiết kế dữ liệu, điều chuyển và đệm ngoại tuyến |  | 4d | 2027-06-21 | 2027-06-24 | 6 |  |  | TL – Solution Architect / Tech Lead [70%]; BA – Business Analyst – phân tích nghiệp vụ [10%] |
| 8 | 1.2.3.3 | A08 Thiết kế giao diện các luồng theo vai trò |  | 3d | 2027-06-22 | 2027-06-24 | 5 |  |  | BA – Business Analyst – phân tích nghiệp vụ [70%]; TL – Solution Architect / Tech Lead [10%] |
| 9 | 1.2.2.1,1.2.3.1,1.1.1.3 | A09 Thẩm định và xác nhận SRS/SAD, RTM và lịch đề xuất |  | 2d | 2027-06-25 | 2027-06-28 | 1, 5, 7, 8 |  |  | PM – Người quản lý dự án [30%]; TL – Solution Architect / Tech Lead [20%]; BA – Business Analyst – phân tích nghiệp vụ [20%] |
| 10 | 1.2.2.1,1.2.3.1 | M1 M1 – SRS/SAD được xác nhận | milestone | 0d | 2027-06-28 | 2027-06-28 | 9 |  |  |  |
| 11 | 1.2.3.1 | A10 Dựng môi trường dev/test và bàn giao thiết kế cho Dev |  | 3d | 2027-07-05 | 2027-07-07 | 10 | start no earlier than 2027-07-05 |  | TL – Solution Architect / Tech Lead [60%]; BE – Backend Developer [20%]; FE – Frontend Developer [20%] |
| 12 | 1.3.3.1,1.3.3.2,1.3.3.3 | G1 Tiếp nhận bộ mẫu kho tổng: 1 cân, 1 máy in, 1 scanner, 1 PC |  | 1d | 2027-07-05 | 2027-07-05 | 10 | start no earlier than 2027-07-05 |  | PM – Người quản lý dự án [10%]; HW – Kỹ sư tích hợp RS232 [20%] |
| 13 | 1.3.5.1,1.3.5.2 | A24 Lập Test Plan và dữ liệu đối soát RTM/AC |  | 5d | 2027-08-03 | 2027-08-09 | 10 | start no earlier than 2027-08-03 |  | QA – QA/QC Engineer – kiểm thử [80%]; BA – Business Analyst – phân tích nghiệp vụ [10%]; TL – Solution Architect / Tech Lead [10%] |
| 14 | 1.3.1.1 | A11 Phát triển danh mục/lô, nhập–xuất–tồn, điều chuyển, Zone/Bin/Rack |  | 12d | 2027-07-06 | 2027-07-21 | 11SS+1d |  |  | BE – Backend Developer [80%]; FE – Frontend Developer [80%]; TL – Solution Architect / Tech Lead [10%]; BA – Business Analyst – phân tích nghiệp vụ [5%] |
| 15 | 1.3.3.1 | A21 Phát triển service cân RS232 và xử lý mất kết nối |  | 9d | 2027-07-08 | 2027-07-20 | 11, 12 |  |  | HW – Kỹ sư tích hợp RS232 [80%]; TL – Solution Architect / Tech Lead [10%] |
| 16 | 1.3.1.2 | A12 Phát triển FEFO và chặn lô hết hạn |  | 4d | 2027-07-22 | 2027-07-27 | 14 |  |  | BE – Backend Developer [80%]; FE – Frontend Developer [80%]; TL – Solution Architect / Tech Lead [10%]; BA – Business Analyst – phân tích nghiệp vụ [5%] |
| 17 | 1.3.3.2 | A22 Phát triển QR và điều khiển in tem theo giao thức phù hợp |  | 7d | 2027-07-21 | 2027-07-29 | 15 |  |  | HW – Kỹ sư tích hợp RS232 [80%]; TL – Solution Architect / Tech Lead [10%] |
| 18 | 1.3.5.1 | A25 Kiểm luồng cân tới web và phục hồi trên bộ mẫu |  | 5d | 2027-08-10 | 2027-08-16 | 15, 14, 13 |  |  | QA – QA/QC Engineer – kiểm thử [80%]; HW – Kỹ sư tích hợp RS232 [20%]; BE – Backend Developer [10%] |
| 19 | 1.3.2.1 | A13 Phát triển BOM, độ ẩm và hao hụt |  | 6d | 2027-07-28 | 2027-08-04 | 16 |  |  | BE – Backend Developer [80%]; FE – Frontend Developer [80%]; TL – Solution Architect / Tech Lead [10%]; BA – Business Analyst – phân tích nghiệp vụ [5%] |
| 20 | 1.3.3.3 | A23 Tích hợp scanner và ba máy chấm công sẵn có |  | 6d | 2027-07-30 | 2027-08-06 | 17 |  |  | HW – Kỹ sư tích hợp RS232 [80%]; BE – Backend Developer [10%]; TL – Solution Architect / Tech Lead [10%] |
| 21 | 1.3.2.2 | A14 Phát triển cảnh báo và tuổi hàng |  | 4d | 2027-08-05 | 2027-08-10 | 19 |  |  | BE – Backend Developer [80%]; FE – Frontend Developer [80%]; TL – Solution Architect / Tech Lead [10%]; BA – Business Analyst – phân tích nghiệp vụ [5%] |
| 22 | 1.3.5.2 | A26 Kiểm tem, FEFO/BOM và đối soát các module đã sẵn sàng |  | 6d | 2027-08-17 | 2027-08-24 | 17, 19, 18 |  |  | QA – QA/QC Engineer – kiểm thử [80%]; HW – Kỹ sư tích hợp RS232 [20%]; BE – Backend Developer [10%]; FE – Frontend Developer [10%] |
| 23 | 1.3.2.3 | A15 Phát triển nhật ký môi trường nhập thủ công |  | 3d | 2027-08-11 | 2027-08-13 | 21 |  |  | BE – Backend Developer [80%]; FE – Frontend Developer [80%]; TL – Solution Architect / Tech Lead [10%]; BA – Business Analyst – phân tích nghiệp vụ [5%] |
| 24 | 1.3.3.4 | A16 Phát triển import/export danh mục, lô và tồn đầu kỳ |  | 4d | 2027-08-16 | 2027-08-19 | 23 |  |  | BE – Backend Developer [80%]; FE – Frontend Developer [80%]; TL – Solution Architect / Tech Lead [10%]; BA – Business Analyst – phân tích nghiệp vụ [5%] |
| 25 | 1.3.4.2 | A17 Phát triển nhà cung cấp, công nợ, đơn hàng và vận chuyển |  | 7d | 2027-08-20 | 2027-08-30 | 24 |  |  | BE – Backend Developer [80%]; FE – Frontend Developer [80%]; TL – Solution Architect / Tech Lead [10%]; BA – Business Analyst – phân tích nghiệp vụ [5%] |
| 26 | 1.3.4.3 | A18 Phát triển lịch ca và phân quyền sáu vai trò |  | 4d | 2027-08-31 | 2027-09-07 | 25 |  |  | BE – Backend Developer [80%]; FE – Frontend Developer [80%]; TL – Solution Architect / Tech Lead [10%]; BA – Business Analyst – phân tích nghiệp vụ [5%] |
| 27 | 1.3.4.4 | A19 Phát triển danh mục tài sản, dụng cụ và vật tư |  | 3d | 2027-09-08 | 2027-09-10 | 26 |  |  | BE – Backend Developer [80%]; FE – Frontend Developer [80%]; TL – Solution Architect / Tech Lead [10%]; BA – Business Analyst – phân tích nghiệp vụ [5%] |
| 28 | 1.3.4.1 | A20 Phát triển dashboard và toàn bộ báo cáo RTM |  | 4d | 2027-09-13 | 2027-09-16 | 27 |  |  | BE – Backend Developer [80%]; FE – Frontend Developer [80%]; TL – Solution Architect / Tech Lead [10%]; BA – Business Analyst – phân tích nghiệp vụ [5%] |
| 29 | 1.3.5.2 | A27 Kiểm tích hợp đầy đủ 20 dòng RTM, quyền, offline và điều chuyển |  | 6d | 2027-09-17 | 2027-09-24 | 28, 20, 22 |  |  | QA – QA/QC Engineer – kiểm thử [80%]; BE – Backend Developer [10%]; FE – Frontend Developer [10%]; TL – Solution Architect / Tech Lead [10%] |
| 30 | 1.3.5.1,1.3.5.2 | R2 Dự phòng xử lý/kiểm lại lỗi tích hợp trước M2 |  | 4d | 2027-09-27 | 2027-09-30 | 29 |  |  | BE – Backend Developer [50%]; FE – Frontend Developer [50%]; HW – Kỹ sư tích hợp RS232 [30%]; QA – QA/QC Engineer – kiểm thử [80%]; TL – Solution Architect / Tech Lead [10%] |
| 31 | 1.3.5.1,1.3.5.2 | M2 M2 – Chức năng và bộ mẫu đạt kiểm tích hợp | milestone | 0d | 2027-09-30 | 2027-09-30 | 30 |  |  |  |
| 32 | 1.4.1.1,1.4.1.3,1.4.1.2 | G2 Nhận phần thiết bị còn lại kho tổng, xác nhận điện/LAN/Excel/người học |  | 1d | 2027-10-04 | 2027-10-04 | 31 | start no earlier than 2027-10-04 |  | PM – Người quản lý dự án [20%]; OS – Onsite Engineer – triển khai [20%]; HW – Kỹ sư tích hợp RS232 [20%] |
| 33 | 1.4.1.2 | A30 Hoàn thiện kịch bản UAT và SOP/User Manual sáu vai trò |  | 5d | 2027-10-04 | 2027-10-08 | 31 | start no earlier than 2027-10-04 |  | BA – Business Analyst – phân tích nghiệp vụ [70%]; QA – QA/QC Engineer – kiểm thử [20%]; OS – Onsite Engineer – triển khai [10%] |
| 34 | 1.4.1.1 | A28 Lắp đặt kho tổng và cấu hình toàn bộ đầu cuối/ngoại vi |  | 4d | 2027-10-05 | 2027-10-08 | 32 |  |  | OS – Onsite Engineer – triển khai [80%]; HW – Kỹ sư tích hợp RS232 [60%]; TL – Solution Architect / Tech Lead [10%] |
| 35 | 1.4.1.3 | A29 Import và đối soát dữ liệu kho tổng trong môi trường chạy thử |  | 3d | 2027-10-11 | 2027-10-13 | 34, 24 |  |  | OS – Onsite Engineer – triển khai [40%]; BA – Business Analyst – phân tích nghiệp vụ [60%]; BE – Backend Developer [30%] |
| 36 | 1.4.1.2,1.3.5.1,1.3.5.2 | A31 UAT kho tổng, đo từng cân/in tem và kiểm toàn bộ luồng |  | 4d | 2027-10-14 | 2027-10-19 | 35, 33 |  |  | QA – QA/QC Engineer – kiểm thử [80%]; BA – Business Analyst – phân tích nghiệp vụ [20%]; OS – Onsite Engineer – triển khai [40%]; HW – Kỹ sư tích hợp RS232 [20%]; BE – Backend Developer [10%]; FE – Frontend Developer [10%] |
| 37 | 1.4.1.2 | R3 Dự phòng sửa và kiểm lại phát hiện UAT kho tổng |  | 2d | 2027-10-20 | 2027-10-21 | 36 |  |  | QA – QA/QC Engineer – kiểm thử [80%]; BE – Backend Developer [50%]; FE – Frontend Developer [50%]; HW – Kỹ sư tích hợp RS232 [20%]; OS – Onsite Engineer – triển khai [30%] |
| 38 | 1.4.1.2 | A32 Đào tạo thực hành kho tổng và BA bàn giao hướng dẫn cho PM/Onsite |  | 3d | 2027-10-22 | 2027-10-26 | 37 |  |  | OS – Onsite Engineer – triển khai [70%]; BA – Business Analyst – phân tích nghiệp vụ [30%]; PM – Người quản lý dự án [10%] |
| 39 | 1.4.1.1,1.4.1.2,1.4.1.3 | M3 M3 – Kho tổng chạy thử/UAT/đào tạo đạt, BA đã bàn giao | milestone | 0d | 2027-10-26 | 2027-10-26 | 38 |  |  |  |
| 40 | 1.4.2.1 | A33 Cấu hình production, chuyển dữ liệu và thử backup/restore |  | 3d | 2027-11-03 | 2027-11-05 | 39 | start no earlier than 2027-11-03 |  | TL – Solution Architect / Tech Lead [50%]; BE – Backend Developer [70%]; OS – Onsite Engineer – triển khai [20%] |
| 41 | 1.4.2.1,1.4.2.2 | A34 Kiểm điều kiện go-live và delta cấu hình/dữ liệu production |  | 2d | 2027-11-08 | 2027-11-09 | 40 |  |  | QA – QA/QC Engineer – kiểm thử [60%]; TL – Solution Architect / Tech Lead [20%]; OS – Onsite Engineer – triển khai [30%]; PM – Người quản lý dự án [20%] |
| 42 | 1.4.2.2 | A35 Kích hoạt vận hành chính thức kho tổng |  | 1d | 2027-11-10 | 2027-11-10 | 41 |  |  | PM – Người quản lý dự án [20%]; OS – Onsite Engineer – triển khai [50%]; BE – Backend Developer [20%]; HW – Kỹ sư tích hợp RS232 [20%] |
| 43 | 1.4.2.2 | M4 M4 – Kho tổng vận hành chính thức | milestone | 0d | 2027-11-10 | 2027-11-10 | 42 |  |  |  |
| 44 | 1.4.2.3 | A36 Hỗ trợ onsite trong hai tuần đầu vận hành kho tổng |  | 10d | 2027-11-11 | 2027-11-24 | 43 |  |  | OS – Onsite Engineer – triển khai [80%]; HW – Kỹ sư tích hợp RS232 [30%]; BE – Backend Developer [10%] |
| 45 | 1.5.1.1 | G3 Nhận và tiền cấu hình thiết bị hai chi nhánh, chốt tuyến công tác |  | 3d | 2027-11-25 | 2027-11-29 | 44 | start no earlier than 2027-11-03 |  | OS – Onsite Engineer – triển khai [30%]; HW – Kỹ sư tích hợp RS232 [60%]; PM – Người quản lý dự án [10%] |
| 46 | 1.5.1.1 | A37 Di chuyển và lắp thiết bị tại chi nhánh 1 |  | 3d | 2027-12-03 | 2027-12-07 | 45 | start no earlier than 2027-12-03 |  | OS – Onsite Engineer – triển khai [80%]; HW – Kỹ sư tích hợp RS232 [30%] |
| 47 | 1.5.2.1 | A38 Cấu hình đồng bộ/ngoại tuyến và dữ liệu chi nhánh 1 |  | 2d | 2027-12-08 | 2027-12-09 | 46 |  |  | TL – Solution Architect / Tech Lead [30%]; BE – Backend Developer [50%]; FE – Frontend Developer [20%]; OS – Onsite Engineer – triển khai [30%] |
| 48 | 1.5.1.1,1.5.2.1 | A39 Nghiệm thu cân/tem, UAT và đối soát chi nhánh 1 |  | 2d | 2027-12-10 | 2027-12-13 | 47 |  |  | QA – QA/QC Engineer – kiểm thử [80%]; OS – Onsite Engineer – triển khai [40%]; HW – Kỹ sư tích hợp RS232 [20%]; TL – Solution Architect / Tech Lead [10%] |
| 49 | 1.5.1.1,1.5.2.1 | R51 Dự phòng sửa/kiểm lại trước vận hành chi nhánh 1 |  | 1d | 2027-12-14 | 2027-12-14 | 48 |  |  | OS – Onsite Engineer – triển khai [60%]; QA – QA/QC Engineer – kiểm thử [60%]; HW – Kỹ sư tích hợp RS232 [30%]; BE – Backend Developer [30%]; FE – Frontend Developer [20%] |
| 50 | 1.5.3.1 | A40 Đào tạo, xác nhận vận hành và hỗ trợ ban đầu chi nhánh 1 |  | 2d | 2027-12-15 | 2027-12-16 | 49 |  |  | OS – Onsite Engineer – triển khai [80%]; PM – Người quản lý dự án [10%]; BE – Backend Developer [10%] |
| 51 | 1.5.1.1 | A41 Di chuyển và lắp thiết bị tại chi nhánh 2 |  | 3d | 2027-12-17 | 2027-12-21 | 50 |  |  | OS – Onsite Engineer – triển khai [80%]; HW – Kỹ sư tích hợp RS232 [30%] |
| 52 | 1.5.2.1 | A42 Cấu hình đồng bộ/ngoại tuyến và dữ liệu chi nhánh 2 |  | 2d | 2027-12-22 | 2027-12-23 | 51 |  |  | TL – Solution Architect / Tech Lead [30%]; BE – Backend Developer [50%]; FE – Frontend Developer [20%]; OS – Onsite Engineer – triển khai [30%] |
| 53 | 1.5.1.1,1.5.2.1 | A43 Nghiệm thu cân/tem, UAT và đối soát chi nhánh 2 |  | 2d | 2027-12-24 | 2027-12-27 | 52 |  |  | QA – QA/QC Engineer – kiểm thử [80%]; OS – Onsite Engineer – triển khai [40%]; HW – Kỹ sư tích hợp RS232 [20%]; TL – Solution Architect / Tech Lead [10%] |
| 54 | 1.5.1.1,1.5.2.1 | R52 Dự phòng sửa/kiểm lại trước vận hành chi nhánh 2 |  | 1d | 2027-12-28 | 2027-12-28 | 53 |  |  | OS – Onsite Engineer – triển khai [60%]; QA – QA/QC Engineer – kiểm thử [60%]; HW – Kỹ sư tích hợp RS232 [30%]; BE – Backend Developer [30%]; FE – Frontend Developer [20%] |
| 55 | 1.5.3.1 | A44 Đào tạo, xác nhận vận hành và hỗ trợ ban đầu chi nhánh 2 |  | 2d | 2027-12-29 | 2027-12-30 | 54 |  |  | OS – Onsite Engineer – triển khai [80%]; PM – Người quản lý dự án [10%]; BE – Backend Developer [10%] |
| 56 | 1.6.1.1,1.6.1.2,1.6.2.1 | A45 Kỹ sư RS232/Frontend bàn giao đặc tả và hồ sơ trước khi rời dự án |  | 1d | 2027-12-31 | 2027-12-31 | 55 |  |  | HW – Kỹ sư tích hợp RS232 [50%]; FE – Frontend Developer [40%]; TL – Solution Architect / Tech Lead [20%]; QA – QA/QC Engineer – kiểm thử [20%]; PM – Người quản lý dự án [10%] |
| 57 | 1.5.1.1,1.5.2.1,1.5.3.1 | M5 M5 – Hai chi nhánh đạt, được đào tạo; hồ sơ kỹ thuật đã bàn giao | milestone | 0d | 2027-12-31 | 2027-12-31 | 56 |  |  |  |
| 58 | 1.6.1.1 | A46 Tổng hợp hồ sơ bốn cân và kiểm lại phần thay đổi |  | 3d | 2028-01-03 | 2028-01-05 | 57 | start no earlier than 2028-01-03 |  | QA – QA/QC Engineer – kiểm thử [80%]; TL – Solution Architect / Tech Lead [20%]; BE – Backend Developer [10%] |
| 59 | 1.6.2.1 | A48 Hoàn thiện SRS/SAD/SOP/User Manual và đào tạo bổ sung |  | 5d | 2028-01-03 | 2028-01-07 | 57 | start no earlier than 2028-01-03 |  | PM – Người quản lý dự án [20%]; OS – Onsite Engineer – triển khai [60%]; TL – Solution Architect / Tech Lead [20%]; BE – Backend Developer [10%] |
| 60 | 1.6.1.2 | A47 Tổng hợp hồ sơ bốn máy in và kiểm lại phần thay đổi |  | 2d | 2028-01-06 | 2028-01-07 | 58 |  |  | QA – QA/QC Engineer – kiểm thử [80%]; TL – Solution Architect / Tech Lead [20%]; BE – Backend Developer [10%] |
| 61 | 1.6.3.1 | R6 Dự phòng đóng phát hiện nghiệm thu tổng thể |  | 2d | 2028-01-10 | 2028-01-11 | 60, 59 |  |  | QA – QA/QC Engineer – kiểm thử [60%]; TL – Solution Architect / Tech Lead [20%]; BE – Backend Developer [50%]; OS – Onsite Engineer – triển khai [20%] |
| 62 | 1.6.3.1 | A49 Nghiệm thu tổng thể với chủ đầu tư và các kho |  | 2d | 2028-01-12 | 2028-01-13 | 61 |  |  | PM – Người quản lý dự án [30%]; QA – QA/QC Engineer – kiểm thử [30%]; TL – Solution Architect / Tech Lead [20%]; OS – Onsite Engineer – triển khai [20%] |
| 63 | 1.6.3.2 | A50 Bàn giao phần mềm/mã nguồn, CSDL, tài khoản, backup và trách nhiệm phí |  | 2d | 2028-01-14 | 2028-01-17 | 62 |  |  | PM – Người quản lý dự án [30%]; TL – Solution Architect / Tech Lead [30%]; BE – Backend Developer [50%]; OS – Onsite Engineer – triển khai [20%] |
| 64 | 1.6.3.2 | M6 M6 – Nghiệm thu, bàn giao và đóng dự án | milestone | 0d | 2028-01-17 | 2028-01-17 | 63 |  |  |  |
| 65 | 1.1.2.1 | L01 Giao ban tuần/tháng |  | 161d | 2027-06-03 | 2028-01-17 |  | start no earlier than 2027-06-03 | PM – Người quản lý dự án | PM – Người quản lý dự án [10%] |
| 66 | 1.1.2.2 | L02 Kiểm soát chi phí/dự phòng |  | 161d | 2027-06-03 | 2028-01-17 |  | start no earlier than 2027-06-03 | PM – Người quản lý dự án | PM – Người quản lý dự án [5%] |
| 67 | 1.1.2.3 | L03 Báo cáo chủ đầu tư |  | 161d | 2027-06-03 | 2028-01-17 |  | start no earlier than 2027-06-03 | PM – Người quản lý dự án | PM – Người quản lý dự án [5%] |
| 68 | 1.1.3.1 | L04 Tiếp nhận và đánh giá thay đổi |  | 161d | 2027-06-03 | 2028-01-17 |  | start no earlier than 2027-06-03 | PM – Người quản lý dự án | PM – Người quản lý dự án [5%] |
| 69 | 1.1.3.1 | L05 Thẩm định kỹ thuật thay đổi |  | 161d | 2027-06-03 | 2028-01-17 |  | start no earlier than 2027-06-03 | TL – Solution Architect / Tech Lead | TL – Solution Architect / Tech Lead [10%] |
| 70 | 1.1.3.2 | L06 Đảm bảo chất lượng quy trình |  | 118d | 2027-08-03 | 2028-01-17 |  | start no earlier than 2027-08-03 | QA – QA/QC Engineer – kiểm thử | QA – QA/QC Engineer – kiểm thử [10%] |

Notes:
- 1: Ba hồ sơ kế hoạch được lập từ tôn chỉ và WBS, có vòng thẩm định; ngân sách chi tiết phối hợp chương 4, chưa tạo PV hoàn chỉnh. / WBS: 1.1.1.1,1.1.1.2,1.1.1.3
- 2: Khảo sát chính tại kho tổng, hai chi nhánh cung cấp thông tin/ảnh/đặc tả từ xa; có một vòng xác minh, không huy động HW hoặc Onsite tháng 1. / WBS: 1.2.1.1,1.2.1.2
- 3: Ước lượng giả định BTL: phạm vi đã chốt, một người/vai trò, dành thời gian thực hiện và xử lý lỗi thông thường; cần hiệu chỉnh sau khảo sát. / WBS: 1.2.1.3
- 4: Ước lượng giả định BTL: phạm vi đã chốt, một người/vai trò, dành thời gian thực hiện và xử lý lỗi thông thường; cần hiệu chỉnh sau khảo sát. / WBS: 1.2.2.2
- 5: Ước lượng giả định BTL: phạm vi đã chốt, một người/vai trò, dành thời gian thực hiện và xử lý lỗi thông thường; cần hiệu chỉnh sau khảo sát. / WBS: 1.2.2.1
- 6: Ước lượng giả định BTL: phạm vi đã chốt, một người/vai trò, dành thời gian thực hiện và xử lý lỗi thông thường; cần hiệu chỉnh sau khảo sát. / WBS: 1.2.3.1
- 7: Ước lượng giả định BTL: phạm vi đã chốt, một người/vai trò, dành thời gian thực hiện và xử lý lỗi thông thường; cần hiệu chỉnh sau khảo sát. / WBS: 1.2.3.2
- 8: Ước lượng giả định BTL: phạm vi đã chốt, một người/vai trò, dành thời gian thực hiện và xử lý lỗi thông thường; cần hiệu chỉnh sau khảo sát. / WBS: 1.2.3.3
- 9: Hai ngày làm việc đặt trước để rà soát và lấy xác nhận đầu mối doanh nghiệp; thời gian phản hồi là điều kiện lịch. / WBS: 1.2.2.1,1.2.3.1,1.1.1.3
- 10: / WBS: 1.2.2.1,1.2.3.1
- 11: Ước lượng giả định BTL: phạm vi đã chốt, một người/vai trò, dành thời gian thực hiện và xử lý lỗi thông thường; cần hiệu chỉnh sau khảo sát. / WBS: 1.2.3.1
- 12: Giả định nhà cung cấp giao bộ 33 triệu ngay đầu tháng 2; PM đặt hàng từ tháng 1. Đây là điểm giao diện mua sắm theo 02 mục V, không thêm số lượng/ngân sách. / WBS: 1.3.3.1,1.3.3.2,1.3.3.3
- 13: Ước lượng giả định BTL: phạm vi đã chốt, một người/vai trò, dành thời gian thực hiện và xử lý lỗi thông thường; cần hiệu chỉnh sau khảo sát. / WBS: 1.3.5.1,1.3.5.2
- 14: Một cặp Backend/Frontend làm lần lượt từng module, API/UI được phối hợp cùng hoạt động. Ba điểm phản ánh phạm vi module và lỗi thường gặp; không phải dữ liệu năng suất đã đo. Bắt đầu sau một ngày dựng môi trường (repo/API khung đã sẵn sàng), song song hai ngày hoàn thiện dev/test; A10 dùng 20% và A11 dùng 80% năng lực mỗi Dev, không vượt 100%. / WBS: 1.3.1.1
- 15: Ước lượng giả định BTL: phạm vi đã chốt, một người/vai trò, dành thời gian thực hiện và xử lý lỗi thông thường; cần hiệu chỉnh sau khảo sát. / WBS: 1.3.3.1
- 16: Một cặp Backend/Frontend làm lần lượt từng module, API/UI được phối hợp cùng hoạt động. Ba điểm phản ánh phạm vi module và lỗi thường gặp; không phải dữ liệu năng suất đã đo. / WBS: 1.3.1.2
- 17: Ước lượng giả định BTL: phạm vi đã chốt, một người/vai trò, dành thời gian thực hiện và xử lý lỗi thông thường; cần hiệu chỉnh sau khảo sát. / WBS: 1.3.3.2
- 18: Ước lượng giả định BTL: phạm vi đã chốt, một người/vai trò, dành thời gian thực hiện và xử lý lỗi thông thường; cần hiệu chỉnh sau khảo sát. / WBS: 1.3.5.1
- 19: Một cặp Backend/Frontend làm lần lượt từng module, API/UI được phối hợp cùng hoạt động. Ba điểm phản ánh phạm vi module và lỗi thường gặp; không phải dữ liệu năng suất đã đo. / WBS: 1.3.2.1
- 20: Ước lượng giả định BTL: phạm vi đã chốt, một người/vai trò, dành thời gian thực hiện và xử lý lỗi thông thường; cần hiệu chỉnh sau khảo sát. / WBS: 1.3.3.3
- 21: Một cặp Backend/Frontend làm lần lượt từng module, API/UI được phối hợp cùng hoạt động. Ba điểm phản ánh phạm vi module và lỗi thường gặp; không phải dữ liệu năng suất đã đo. / WBS: 1.3.2.2
- 22: Ước lượng giả định BTL: phạm vi đã chốt, một người/vai trò, dành thời gian thực hiện và xử lý lỗi thông thường; cần hiệu chỉnh sau khảo sát. / WBS: 1.3.5.2
- 23: Một cặp Backend/Frontend làm lần lượt từng module, API/UI được phối hợp cùng hoạt động. Ba điểm phản ánh phạm vi module và lỗi thường gặp; không phải dữ liệu năng suất đã đo. / WBS: 1.3.2.3
- 24: Một cặp Backend/Frontend làm lần lượt từng module, API/UI được phối hợp cùng hoạt động. Ba điểm phản ánh phạm vi module và lỗi thường gặp; không phải dữ liệu năng suất đã đo. / WBS: 1.3.3.4
- 25: Một cặp Backend/Frontend làm lần lượt từng module, API/UI được phối hợp cùng hoạt động. Ba điểm phản ánh phạm vi module và lỗi thường gặp; không phải dữ liệu năng suất đã đo. / WBS: 1.3.4.2
- 26: Một cặp Backend/Frontend làm lần lượt từng module, API/UI được phối hợp cùng hoạt động. Ba điểm phản ánh phạm vi module và lỗi thường gặp; không phải dữ liệu năng suất đã đo. / WBS: 1.3.4.3
- 27: Một cặp Backend/Frontend làm lần lượt từng module, API/UI được phối hợp cùng hoạt động. Ba điểm phản ánh phạm vi module và lỗi thường gặp; không phải dữ liệu năng suất đã đo. / WBS: 1.3.4.4
- 28: Một cặp Backend/Frontend làm lần lượt từng module, API/UI được phối hợp cùng hoạt động. Ba điểm phản ánh phạm vi module và lỗi thường gặp; không phải dữ liệu năng suất đã đo. / WBS: 1.3.4.1
- 29: Ước lượng giả định BTL: phạm vi đã chốt, một người/vai trò, dành thời gian thực hiện và xử lý lỗi thông thường; cần hiệu chỉnh sau khảo sát. / WBS: 1.3.5.2
- 30: Khối dự phòng thời gian công khai cho lỗi liên module/phần cứng; 4 ngày tương đương khoảng 7% chuỗi phát triển 54 ngày, không cộng thêm 10% từng dòng. / WBS: 1.3.5.1,1.3.5.2
- 31: / WBS: 1.3.5.1,1.3.5.2
- 32: 37 triệu còn lại theo 02 mục V: 1 cân, 1 máy in, 3 scanner, 1 PC. PM đặt trước tháng 5; khách hàng bố trí điện/LAN, dữ liệu chuẩn và người học trước lắp đặt. / WBS: 1.4.1.1,1.4.1.3,1.4.1.2
- 33: Ước lượng giả định BTL: phạm vi đã chốt, một người/vai trò, dành thời gian thực hiện và xử lý lỗi thông thường; cần hiệu chỉnh sau khảo sát. / WBS: 1.4.1.2
- 34: Ước lượng giả định BTL: phạm vi đã chốt, một người/vai trò, dành thời gian thực hiện và xử lý lỗi thông thường; cần hiệu chỉnh sau khảo sát. / WBS: 1.4.1.1
- 35: Ước lượng giả định BTL: phạm vi đã chốt, một người/vai trò, dành thời gian thực hiện và xử lý lỗi thông thường; cần hiệu chỉnh sau khảo sát. / WBS: 1.4.1.3
- 36: Ước lượng giả định BTL: phạm vi đã chốt, một người/vai trò, dành thời gian thực hiện và xử lý lỗi thông thường; cần hiệu chỉnh sau khảo sát. / WBS: 1.4.1.2,1.3.5.1,1.3.5.2
- 37: Dự phòng riêng cho cấu hình/dữ liệu thực địa chưa có trên bộ mẫu; không dùng thay tiêu chí đạt. / WBS: 1.4.1.2
- 38: Giả định sáu nhóm người dùng học theo các ca trong ba ngày, khách hàng cung cấp người học; mỗi vai trò có kết quả thực hành trước sử dụng. / WBS: 1.4.1.2
- 39: / WBS: 1.4.1.1,1.4.1.2,1.4.1.3
- 40: Ước lượng giả định BTL: phạm vi đã chốt, một người/vai trò, dành thời gian thực hiện và xử lý lỗi thông thường; cần hiệu chỉnh sau khảo sát. / WBS: 1.4.2.1
- 41: Kiểm lại điều kiện AC-01–AC-04 khác môi trường UAT; đại diện kho/chủ đầu tư ký quyết định mở kho. / WBS: 1.4.2.1,1.4.2.2
- 42: Một ngày chuyển trạng thái sử dụng sau xác nhận sẵn sàng; có phương án quay lại và đầu mối xử lý. / WBS: 1.4.2.2
- 43: / WBS: 1.4.2.2
- 44: Hai tuần lịch liên tiếp sau go-live tương ứng 10 ngày làm việc trong lịch giả định. Ngoài giờ/cuối tuần kho không giao dịch theo giả định; phải xác nhận nếu kho hoạt động khác. / WBS: 1.4.2.3
- 45: Bộ chi nhánh 60 triệu nhận tháng 6 theo 02, kiểm/cấu hình trước tháng 7; địa điểm và thời gian đi lại được giả định trong các hoạt động từng kho. / WBS: 1.5.1.1
- 46: Một ngày đi lại và hai ngày lắp: 1 PC, 1 cân, 1 máy in, 2 scanner và máy chấm công khách hàng; giả định tuyến đi mỗi kho tối đa một ngày. / WBS: 1.5.1.1
- 47: Cấu hình từ thiết kế đã kiểm, nạp dữ liệu khách hàng và đối soát kho gửi–nhận. / WBS: 1.5.2.1
- 48: AC-01/AC-02 từng thiết bị, AC-03 quyền/offline/điều chuyển; chưa đưa vào sử dụng khi chưa đạt. / WBS: 1.5.1.1,1.5.2.1
- 49: Dự phòng tại gate từng kho, xử lý và kiểm lại lỗi trước đào tạo/kích hoạt; lỗi chưa đạt không được bỏ qua để giữ mốc. / WBS: 1.5.1.1,1.5.2.1
- 50: Ngày đầu đào tạo/thực hành, xác nhận đạt trước kích hoạt; ngày thứ hai hỗ trợ vận hành ban đầu. / WBS: 1.5.3.1
- 51: Một kỹ sư Onsite nên hai chi nhánh triển khai lần lượt, cùng cấu hình/số lượng với chi nhánh 1. / WBS: 1.5.1.1
- 52: Cấu hình, nạp/đối soát dữ liệu, kiểm liên kho theo bộ kịch bản đã đạt. / WBS: 1.5.2.1
- 53: AC-01/AC-02 từng thiết bị và AC-03 trước sử dụng, có hồ sơ nghiệm thu. / WBS: 1.5.1.1,1.5.2.1
- 54: Dự phòng một ngày tại gate chi nhánh 2; không kích hoạt khi chưa đạt. / WBS: 1.5.1.1,1.5.2.1
- 55: Đào tạo/thực hành trước kích hoạt, sau đó hỗ trợ ban đầu như chi nhánh 1. / WBS: 1.5.3.1
- 56: Bàn giao hồ sơ bốn cân/bốn máy in, cấu hình và lỗi còn mở cho QA/Tech Lead; không bố trí HW/FE ở tháng 8. / WBS: 1.6.1.1,1.6.1.2,1.6.2.1
- 57: / WBS: 1.5.1.1,1.5.2.1,1.5.3.1
- 58: QA/Tech Lead tổng hợp kiểm tại từng kho và kiểm delta; không lần đầu nghiệm thu thiết bị trong tháng 8. / WBS: 1.6.1.1
- 59: PM/Onsite cập nhật từ bản BA đã bàn giao; Tech Lead/Backend cập nhật tài liệu kỹ thuật và vận hành; đào tạo bổ sung theo nhật ký phát sinh. / WBS: 1.6.2.1
- 60: Tổng hợp điều kiện đo <2 giây và dữ liệu tem/QR của từng máy; kiểm lại delta nếu cần. / WBS: 1.6.1.2
- 61: Hai ngày dự phòng kiểm/cập nhật hồ sơ trước ký; không thay trách nhiệm xử lý lỗi ngăn bàn giao. / WBS: 1.6.3.1
- 62: Lịch họp và hai ngày phản hồi/chốt biên bản giả định đã đặt trước; không coi im lặng là ký nhận. / WBS: 1.6.3.1
- 63: Thực hành khôi phục và ký nhận đầu mối quản trị/phí sau tháng 8; tài khoản thực tế không đưa vào báo cáo nhóm. / WBS: 1.6.3.2
- 64: / WBS: 1.6.3.2
- 65: Nỗ lực xuyên kỳ theo năng lực trung bình; không thuộc chuỗi bàn giao. Không lấy đường đỏ tự động của dòng này làm đường găng sản phẩm.
- 66: Nỗ lực xuyên kỳ theo năng lực trung bình; không thuộc chuỗi bàn giao. Không lấy đường đỏ tự động của dòng này làm đường găng sản phẩm.
- 67: Nỗ lực xuyên kỳ theo năng lực trung bình; không thuộc chuỗi bàn giao. Không lấy đường đỏ tự động của dòng này làm đường găng sản phẩm.
- 68: Nỗ lực xuyên kỳ theo năng lực trung bình; không thuộc chuỗi bàn giao. Không lấy đường đỏ tự động của dòng này làm đường găng sản phẩm.
- 69: Nỗ lực xuyên kỳ theo năng lực trung bình; không thuộc chuỗi bàn giao. Không lấy đường đỏ tự động của dòng này làm đường găng sản phẩm.
- 70: Nỗ lực xuyên kỳ theo năng lực trung bình; không thuộc chuỗi bàn giao. Không lấy đường đỏ tự động của dòng này làm đường găng sản phẩm.
